# 东科 Vth -1V

Schedule from a web Gantt chart, 2025-09-29 to 2026-11-10.
Every day is a working day

## Schedule

| ID | WBS | Task | Duration | Start | Finish | Predecessors | Complete | Status |
| --- | --- | --- | --- | --- | --- | --- | --- | --- |
| 2 | 1 | **1st Learning Cycle** | 123d | 2025-09-29 | 2026-01-29 |  | 1% |  |
| 3 | 1.1 | kick-off | 1d | 2025-09-29 | 2025-09-29 |  | 100% |  |
| 4 | 1.2 | 项目立项会议 | 1d | 2025-10-13 | 2025-10-13 |  |  |  |
| 5 | 1.3 | W/S | 30d | 2025-10-15 | 2025-11-13 |  |  |  |
| 6 | 1.4 | F/O | 2d | 2025-11-14 | 2025-11-15 | 5 |  | waiting |
| 7 | 1.5 | samples | 35d | 2025-11-16 | 2025-12-20 | 6 |  | waiting |
| 8 | 1.6 | RE 1000H | 40d | 2025-12-21 | 2026-01-29 | 7 |  | waiting |
| 9 | 2 | **2nd Learning Cycle** | 121d | 2026-01-30 | 2026-05-30 |  |  |  |
| 10 | 2.1 | RE 1000H | 121d | 2026-01-30 | 2026-05-30 |  |  |  |
| 11 | 3 | **3rd Learning Cycl** | 93d | 2026-05-31 | 2026-08-31 |  |  |  |
| 12 | 3.1 | RE 1000H | 93d | 2026-05-31 | 2026-08-31 |  |  |  |
| 13 | 4 | **Formal Qual.** | 71d | 2026-09-01 | 2026-11-10 |  |  |  |
| 14 | 4.1 | SPW W/S | 41d | 2026-09-01 | 2026-10-11 |  |  |  |
| 15 | 4.2 | F/O & Assemby | 30d | 2026-10-12 | 2026-11-10 | 14 |  | waiting |
